Schedule from MS Project, 2009-11-16 to 2010-04-05.
Microsoft

## Calendars

- Стандартный: Mon-Fri 09:00-13:00, 14:00-18:00; Sat-Sun off.

## Schedule

| ID | Task | Duration | Start | Finish | Predecessors | Total slack | Free slack |
| --- | --- | --- | --- | --- | --- | --- | --- |
| 1 | Подготовительные работы | 10d | 2009-11-16 | 2009-11-27 |  | 0d |  |
| 2 | Планировка площадей | 1d | 2009-11-30 | 2009-11-30 | 1 | 0d |  |
| 3 | Прочие и неучтенные общестроительные работы | 5d | 2009-11-30 | 2009-12-04 | 1 | 69d | 0d |
| 4 | Разработка грунта в отвал в котлованах | 1d | 2009-12-01 | 2009-12-01 | 2 | 0d |  |
| 5 | Укладка фундаментов под колонны | 7d | 2009-12-02 | 2009-12-10 | 4 | 0d |  |
| 6 | Укладка ригелей | 1d | 2009-12-11 | 2009-12-11 | 5 | 0d |  |
| 7 | Сантехнические работы 1-я стадия | 5d | 2009-12-11 | 2009-12-17 | 5 | 77d |  |
| 8 | Электромонтажные работы 1 стадия | 5d | 2009-12-11 | 2009-12-17 | 5 | 77d |  |
| 9 | Установка диафрагм жесткости | 8d | 2009-12-14 | 2009-12-23 | 6 | 0d |  |
| 10 | Укладка ригелей | 3d | 2009-12-14 | 2009-12-16 | 6 | 8d | 5d |
| 11 | Установка колонн прямоугольного сечения в стаканы фундаментов зданий | 7d | 2009-12-24 | 2010-01-01 | 9 | 0d |  |
| 12 | Укладка плит перекрытий | 7d | 2010-01-04 | 2010-01-12 | 11 | 1d | 0d |
| 13 | Укладка блоков и плит ленточных фундаментов | 3d | 2010-01-13 | 2010-01-15 | 12 | 4d | 0d |
| 14 | Установка перегородок из гипсовых плит | 2d | 2010-01-18 | 2010-01-19 | 13 | 4d | 0d |
| 15 | Укладка перемычек | 4d | 2010-01-20 | 2010-01-25 | 14 | 4d | 0d |
| 16 | Устройство кровель | 2d | 2010-01-26 | 2010-01-27 | 15 | 6d | 0d |
| 17 | Устройство лестничных маршей в опалубке | 3d | 2010-01-28 | 2010-02-01 | 16 | 6d |  |
| 18 | Установка диафрагм жесткости | 4d | 2009-12-24 | 2009-12-29 | 10, 9 | 3d |  |
| 19 | Установка колонн прямоугольного сечения в стаканы фундаментов зданий | 8d | 2010-01-04 | 2010-01-13 | 18, 11 | 0d |  |
| 20 | Укладка плит перекрытий | 6d | 2010-01-14 | 2010-01-21 | 19, 12 | 0d |  |
| 21 | Укладка блоков и плит ленточных фундаментов | 5d | 2010-01-22 | 2010-01-28 | 20, 13 | 0d |  |
| 22 | Установка перегородок из гипсовых плит | 1d | 2010-01-29 | 2010-01-29 | 21, 14 | 0d |  |
| 23 | Укладка перемычек | 5d | 2010-02-01 | 2010-02-05 | 22, 15 | 0d |  |
| 24 | Устройство кровель | 2d | 2010-02-08 | 2010-02-09 | 23, 16 | 0d |  |
| 25 | Устройство лестничных маршей в опалубке | 3d | 2010-02-10 | 2010-02-12 | 24, 17 | 0d |  |
| 26 | Устройство полов бетонных толщиной | 5d | 2010-02-15 | 2010-02-19 | 25 | 0d |  |
| 27 | Сантехнические работы 2-я стадия | 4d | 2010-02-15 | 2010-02-18 | 25 | 22d |  |
| 28 | Электромонтажные работы 2 стадия | 4d | 2010-02-15 | 2010-02-18 | 25 | 22d |  |
| 29 | Устройство покрытий | 2d | 2010-02-22 | 2010-02-23 | 26 | 1d | 0d |
| 30 | Устройство покрытий на цементном растворе из плиток | 3d | 2010-02-24 | 2010-02-26 | 29 | 1d | 0d |
| 31 | Установка в жилых и общественных зданиях блоков оконных с переплетами | 4d | 2010-03-01 | 2010-03-04 | 30 | 1d | 0d |
| 32 | Установка деревянных дверных блоков | 2d | 2010-03-05 | 2010-03-08 | 31 | 1d | 0d |
| 33 | Установка деревянных подоконных досок в каменных стенах | 1d | 2010-03-09 | 2010-03-09 | 32 | 1d |  |
| 34 | Устройство полов бетонных толщиной | 5d | 2010-02-22 | 2010-02-26 | 26 | 0d |  |
| 35 | Устройство покрытий | 2d | 2010-03-01 | 2010-03-02 | 34, 29 | 0d |  |
| 36 | Устройство покрытий на цементном растворе из плиток | 3d | 2010-03-03 | 2010-03-05 | 35, 30 | 0d |  |
| 37 | Установка в жилых и общественных зданиях блоков оконных с переплетами | 2d | 2010-03-08 | 2010-03-09 | 36, 31 | 0d |  |
| 38 | Установка деревянных дверных блоков | 1d | 2010-03-10 | 2010-03-10 | 37, 32 | 0d |  |
| 39 | Установка деревянных подоконных досок в каменных стенах | 1d | 2010-03-11 | 2010-03-11 | 38, 33 | 0d |  |
| 40 | Монтаж оборудования | 7d | 2010-03-12 | 2010-03-22 | 39 | 0d |  |
| 41 | Дороги, подъезды тротуары | 5d | 2010-03-23 | 2010-03-29 | 40, 27, 28 | 0d |  |
| 42 | Озеленение | 1d | 2010-03-30 | 2010-03-30 | 41 | 0d |  |
| 43 | Пусконаладочные работы | 3d | 2010-03-31 | 2010-04-02 | 42, 3 | 0d |  |
| 44 | Ввод в эксплуатацию | 1d | 2010-04-05 | 2010-04-05 | 43 | 0d |  |
